Task ID, Task Name                           , SDLC Phase       , Category      , Priority, Status     , % Complete, Assigned To, Start Date, End Date  , Duration (days), Predecessor, Description                                                                                                                                                                                          , Acceptance Criteria                                                            , Criteria Met, Deliverable                                               , Submitted, Comments / Notes                                                             , Risk Level, Linked Bug ID
   1.10, Branch Deploy Context Configuration , 1 - Planning     , DevOps        , High    , Complete   , 100%      , Keenan     , 2026-02-18, 2026-02-18, 1d             ,        1.9 , "Configured netlify.toml branch deploy contexts for staging and development: VITE_ENABLE_LOGIN=true set for staging and development contexts. Enabled branch deploys in Netlify dashboard (Site configuration > Branches and deploy contexts). Staging accessible at staging--edmecaacademy.netlify.app."                                                                                   , "Staging and development branches deploy automatically with correct env vars"  , TRUE        , "netlify.toml branch contexts, Netlify dashboard config" , TRUE     , Branch deploy contexts ensure environment-specific behaviour across all branches , Low
   2   , PHASE 2: DESIGN                     , 2 - Design       ,               ,         ,            , 25%       ,            , 2026-02-12, 2026-03-15, 31d            ,            ,                                                                                                                                                                                                      ,                                                                                ,             ,                                                           , TRUE
   2.1 , Design System & Brand Guidelines    , 2 - Design       , UI/UX         , High    , In Progress, 75%       , Keenan     , 2026-02-12, 2026-02-25, 13d            ,        1.5 , "Developing EDMECA brand identity integration: color palette, typography system, component design guidelines, logo usage, and visual hierarchy standards. Updated Feb 18: hero heading, subtitle, badge text colour (black), Who We Serve subtitle, South African testimonials (Naledi Mokoena, Sipho Ndlovu, Dr. Zanele Mthembu), header logo size increased h-10 to h-14, light mode set as default."                                           , Consistent brand application across all digital touchpoints                    ,             , "Color palette, typography, component guidelines"         ,          , EDMECA brand identity integration with professional design standards         , Low
   2.2 , Landing Page Wireframes             , 2 - Design       , UI/UX         , High    , Not Started, 0%        , Team       , 2026-02-20, 2026-02-28, 8d             ,        2.1 , "Create homepage wireframes and user experience design: hero section layout, feature showcase positioning, call-to-action placement, and conversion optimization."                                   , Homepage design supports user engagement and conversion goals                  ,             , "Hero section, feature showcase, CTA placement"           ,          , Homepage user experience design focused on engagement and conversions        , Medium
   2.3 , Portal Dashboard Design             , 2 - Design       , UI/UX         , High    , Not Started, 0%        , Team       , 2026-02-25, 2026-03-05, 8d             ,        2.2 , "Design learning portal interface: dashboard layout, tool navigation system, user profile section, progress tracking displays, and learning path visualization."                                     , Dashboard provides clear navigation and progress visibility                    ,             , "Dashboard layout, tool navigation, user profile"         ,          , Learning portal interface design for optimal user experience                 , Medium
   2.4 , Learning Tools Interface Design     , 2 - Design       , UI/UX         , High    , Not Started, 0%        , Team       , 2026-03-01, 2026-03-10, 9d             ,        2.3 , "Design interactive learning tool interfaces: Business Model Canvas tool, assessment forms, progress tracking visualizations, and interactive workshop elements."                                    , Learning tools are intuitive and support educational objectives                ,             , "BMC tool, assessment forms, progress tracking"           ,          , Interactive learning tool designs focused on user engagement                 , High
   2.5 , Mobile Responsive Design            , 2 - Design       , UI/UX         , High    , Not Started, 0%        , Team       , 2026-03-05, 2026-03-15, 10d            ,        2.4 , "Create mobile-first responsive design system: breakpoint strategy, touch-friendly interfaces, mobile navigation patterns, and cross-device compatibility."                                          , All features work seamlessly across desktop                                    , tablet      , and mobile devices                                        ,          , "Mobile-first responsive breakpoints, layouts"                               ,           , Cross-device compatibility design ensuring optimal mobile experience, Medium, 
   2.6 , Accessibility Design Guidelines     , 2 - Design       , Accessibility , Medium  , Not Started, 0%        , Team       , 2026-03-10, 2026-03-15, 5d             ,        2.5 , "Establish WCAG 2.1 AA compliant design patterns: color contrast standards, keyboard navigation support, screen reader compatibility, and inclusive design principles."                              , Design system meets accessibility standards for all users                      ,             , "WCAG 2.1 AA compliant design patterns"                   ,          , Inclusive design implementation ensuring accessibility for all users         , Low
   3   , PHASE 3: DEVELOPMENT                , 3 - Development  ,               ,         ,            , 36%       ,            , 2026-02-12, 2026-03-25, 41d            ,            ,                                                                                                                                                                                                      ,                                                                                , TRUE        ,                                                           , TRUE
   3.1 , Project Setup & Environment         , 3 - Development  , Setup         , Critical, Complete   , 100%      , Keenan     , 2026-02-12, 2026-02-14, 2d             ,        1.1 , "Vite 5 monorepo scaffolded: client/ (React 18 + TypeScript strict), server/ (Express), shared/ (Drizzle ORM schema). tsconfig.json path aliases (@/ → client/src/). Tailwind CSS + postcss.config.js. shadcn/ui component library (40+ components under client/src/components/ui/). TanStack Query v5 (queryClient.ts). Wouter client-side routing. Drizzle ORM (drizzle.config.ts, shared/schema.ts). scripts/build.ts for production build pipeline. .env.local for local secrets (gitignored). Supabase client initialised in client/src/lib/supabase.ts." , Development environment supports efficient coding and building                 , TRUE        , "Vite 5, React 18 + TypeScript, Tailwind, shadcn/ui, TanStack Query v5, Wouter, Drizzle ORM, Express" , TRUE     , Project scaffolded before Smartsheet tracker — initial commit sets up full monorepo structure , Low
   3.2 , Authentication System Implementation, 3 - Development  , Security      , Critical, Complete   , 100%      , Keenan     , 2026-02-14, 2026-02-19, 5d             ,        3.1 , "Implemented full Supabase authentication stack: login/signup forms with email/password, Google OAuth integration (Client ID: 802905823132-.apps.googleusercontent.com), signInWithOAuth with dynamic redirectTo URL (window.location.origin/portal), real Google G icon on login page, session management, and error handling. Resend SMTP configured (smtp.resend.com:465) using verified edmeca.co.za domain. Email templates branded with EdMeCa logo (Supabase Storage) and primary colour (#1f3a6e)."                                               , Users can register                                                             , login       , and manage accounts securely                              , TRUE     , "Login/signup, OAuth integration, session management"                        , TRUE      , Comprehensive authentication system with multiple login options     , Low
   3.3 , Protected Routing System            , 3 - Development  , Security      , High    , Complete   , 100%      , Keenan     , 2026-02-15, 2026-02-16, 1d             ,        3.2 , "ProtectedRoute wrapper component in App.tsx: calls useAuth() → supabase.auth.getUser() + onAuthStateChange. Shows Loader2 spinner during auth check. On no session → window.location.href='/login' with redirect spinner. All portal routes wrapped: /portal (Dashboard), /portal/profile, /portal/tools/bmc, /portal/tools/swot, /portal/tools/value-proposition, /portal/tools/pitch-builder, /portal/tools/progress-tracker. Marketing routes (/home, /about, /solutions, /frameworks, /engagement, /contact, /login) remain public. Wouter Switch/Route pattern used throughout App.tsx." , Protected routes require authentication and redirect appropriately             , TRUE        , "ProtectedRoute component in App.tsx, useAuth hook, 7 protected portal routes" , TRUE     , Auth guard confirmed working — unauthenticated access redirects cleanly to /login , Low
   3.4 , User Dashboard Development          , 3 - Development  , Frontend      , High    , In Progress, 70%       , Keenan     , 2026-02-16, 2026-02-25, 9d             ,        3.3 , "Portal entry point built in Dashboard.tsx. Stats cards: total artifact count, completed milestones count, active tools count — all queried live from Supabase via queryKeys. Portal header: user avatar (links to /portal/profile), display name, logout button, Support button (→ /contact). Tool navigation grid: Business Model Canvas, SWOT/PESTLE, Value Proposition, Pitch Builder, Progress Tracker — each card with icon, description, and launch button. useRealtimeSync() wired in (data auto-refreshes on DB changes). Avatar + name section links to Profile page. Commit 383e17c adds tool cards; a0d40f5 adds Support button; 8523155 adds realtime sync. Remaining: detailed learning path visualisation, notification/activity feed widget." , Dashboard provides clear overview and easy access to all features              ,             , "Dashboard.tsx, portal header, tool grid, stats cards, realtime sync" ,          , Dashboard functional with 5 tools, stats, realtime — learning path visualisation still pending , Medium
   3.5 , Marketing Pages Development         , 3 - Development  , Frontend      , High    , Not Started, 0%        , Team       , 2026-02-20, 2026-03-05, 13d            ,        2.2 , "Build public-facing content pages: homepage, about us, services overview, contact information, frameworks explanation, and call-to-action sections."                                                , Marketing pages effectively communicate value proposition and drive conversions,             , "Home, About, Services, Contact, Frameworks pages"        ,          , Public-facing content pages focused on user acquisition                      , Medium
   3.6 , Business Model Canvas Tool          , 3 - Development  , Frontend      , Critical, Complete   , 100%      , Keenan     , 2026-02-25, 2026-02-20, 1d             ,        3.4 , "Integrated full BMC tool from EDMECA-BMC-main codebase into the portal. Three-view tool: Guided (step-by-step wizard), Canvas (visual BMC grid), Dashboard (stats and export). Saves completed canvas to Supabase artifacts table (tool_type=bmc, content=jsonb). Word document export via docx + file-saver. JSON export also available. Auth-gated via ProtectedRoute at /portal/tools/bmc." , BMC tool supports interactive business planning and saves user progress        , TRUE        , "BMCTool.tsx (1466 lines), Supabase artifacts table, Word + JSON export, file-saver package" , TRUE     , Completed in task 3.15 (commit 2906e0d). BUG-005 resolved (missing logo asset, fixed in 4e3008e). Artifacts confirmed live in Supabase. , High
   3.7 , Contact Form & Communication        , 3 - Development  , Frontend      , High    , Complete   , 100%      , Keenan     , 2026-02-20, 2026-02-20, 1d             ,        3.5 , "Contact form implemented on /contact with Netlify Forms (team email notification) + dual-write to Supabase contact_submissions table. Zod validation via react-hook-form. Fields: name, email, company, audienceType (entrepreneur/programme/other), message. Success state shows thank-you card. Supabase write is best-effort (non-fatal)." , Users can successfully contact the business through multiple channels          , TRUE        , "Contact.tsx, Netlify hidden form, contact_submissions Supabase table, dual-write mutationFn" , TRUE     , Commit 50527da. Netlify Forms handles team email notification. Supabase contact_submissions table has no RLS (anonymous inserts allowed). Unused Phone import removed. , Low
   3.8 , User Profile Management             , 3 - Development  , Frontend      , Medium  , Complete   , 100%      , Keenan     , 2026-03-05, 2026-02-20, 1d             ,        3.4 , "Built user profile management page at /portal/profile. Features: display name editing (via supabase.auth.updateUser), business name and description editing (via user_profiles table upsert), activity summary (artifact count, completed count, progress %), recent activity list, and change password. Dashboard avatar/name now links to profile page." , Users can manage their profiles and track learning progress                    , TRUE        , "Profile.tsx page, /portal/profile route, avatar link from Dashboard" , TRUE     , Commit 0c15cf3. profileService already existed in services.ts. user_profiles table with RLS confirmed live in Supabase. , Medium
   3.9 , Data Persistence Layer              , 3 - Development  , Backend       , High    , Complete   , 100%      , Keenan     , 2026-02-20, 2026-02-20, 1d             ,        3.6 , "Full typed data persistence layer: (1) services.ts overhauled — all any types replaced with Artifact/ProgressEntry/UserProfile/ContactSubmission from shared/schema.ts, new saveArtifact() upsert helper, typed progressService with toggleComplete/deleteProgressEntry. (2) queryKeys.ts — centralized React Query key factory for artifacts.all/byType/byId, progress.all, profile.current. (3) use-realtime.ts hook — Supabase Realtime postgres_changes subscription per user on artifacts and progress_entries, auto-invalidates React Query cache. (4) useRealtimeSync() wired into Dashboard.tsx. (5) ProgressTrackerTool refactored off raw supabase calls to use progressService + queryKeys. (6) Migration 20260220140000_performance_indexes.sql — composite indexes on (user_id,tool_type,created_at), (user_id,status), (user_id,created_at), partial index on completed milestones. RLS was already fully implemented in initial migration." , All application data properly stored, secured (RLS), and synced in real time   , TRUE        , "services.ts (typed), queryKeys.ts, use-realtime.ts, performance_indexes migration" , TRUE     , Commit 3.9 — see git log. Run 20260220140000_performance_indexes.sql in Supabase SQL editor. , Medium
   3.10, Error Handling & Loading States     , 3 - Development  , Frontend      , Medium  , Not Started, 0%        , Team       , 2026-03-10, 2026-03-20, 10d            ,        3.9 , "Enhance user experience: error boundaries, loading spinners, retry logic, offline handling, and user feedback systems."                                                                             , Application handles errors gracefully and provides clear user feedback         ,             , "Error boundaries, loading spinners, retry logic"         ,          , Professional user experience with comprehensive error handling               , Low
   3.11, Theme System & Dark Mode            , 3 - Development  , Frontend      , Low     , Not Started, 0%        , Team       , 2026-03-15, 2026-03-25, 10d            ,        3.10, "Implement visual customization: theme provider setup, dark/light mode toggle, theme persistence, and consistent styling across modes."                                                              , Users can customize their visual experience with persistent theme preferences  ,             , "Theme provider, dark/light mode toggle, persistence"     ,          , Visual customization features enhancing user preference options              , Low
   3.12, Login Button Environment Toggle      , 3 - Development  , Security      , High    , Complete   , 100%      , Keenan     , 2026-02-18, 2026-02-19, 2d             ,        3.2 , "Environment-based login button: VITE_ENABLE_LOGIN env var controls behaviour. Production: button renders as disabled element with no anchor wrapper - no navigation. Staging/dev: renders as <a href=/login> anchor link. Implemented in Header.tsx with conditional render. netlify.toml staging and development contexts set VITE_ENABLE_LOGIN=true. Explicit [context.production] block added 2026-02-19 with VITE_ENABLE_LOGIN=false to ensure production login stays disabled regardless of dashboard variable changes. .env.local set to true for local dev."                , "Disabled button on prod cannot navigate; active on staging/dev"               , TRUE        , "Header.tsx conditional render, netlify.toml env contexts", TRUE     , Explicit production context added as safeguard - auth testing on staging only  , Low
   3.13, Email Integration & Templates        , 3 - Development  , Backend       , High    , Complete   , 100%      , Keenan     , 2026-02-18, 2026-02-19, 2d             ,        3.2 , "Resend transactional email: account created, edmeca.co.za domain verified (DKIM TXT resend._domainkey, SPF TXT send, MX send priority 10 to feedback-smtp.eu-west-1.amazonses.com). API key stored in .env.local (not tracked in version control). Supabase SMTP: smtp.resend.com:465 username=resend. Gmail SMTP rejected (Google Workspace admin restriction - config reloader error). 3 email templates customised: Confirm Signup, Reset Password, Magic Link - all with logo from Supabase Storage (publiclogos/logo.png), #1f3a6e primary button, Info@edmeca.co.za footer. DMARC TXT _dmarc record added for deliverability (test email landed in spam without it).", "Branded confirmation email sent from Info@edmeca.co.za via Resend"            , TRUE        , "Resend account, DNS records, SMTP config, email templates", TRUE     , Gmail SMTP not viable for Workspace accounts without admin SMTP relay config  , Low       , BUG-001 BUG-002
   3.14, Google OAuth Configuration           , 3 - Development  , Security      , Critical, In Progress, 75%       , Keenan     , 2026-02-18, 2026-02-19, 2d             ,        3.2 , "Google OAuth configured in Supabase: credentials provided by supervisor Raymond Crow (stored securely in .env.local and Supabase dashboard - not tracked in version control). OAuth project: gen-lang-client-0996272869. Redirect URI: supabase callback URL. JS origins: staging site + Supabase URL. Supabase redirect URL set to staging/portal. Code: signInWithOAuth passes dynamic redirectTo using window.location.origin, Mail icon replaced with real Google SVG G icon in Login.tsx. PENDING: Supervisor to update OAuth consent screen app name to EdMeCa Academy and publish app (currently shows dqvdnyxkkletgkkpicdg.supabase.co).", "Google OAuth opens consent screen and redirects to /portal on success"         ,             , "Supabase Google provider, redirectTo, Google icon"       ,          , OAuth working on staging - consent screen app name pending supervisor update  , Medium    , BUG-003
   3.15, BMC Tool Integration into Portal    , 3 - Development  , Feature Development, High, Complete   , 100%      , Keenan     , 2026-02-19, 2026-02-19, 1d             ,        3.6 , "Integrated BMC tool from separate EDMECA-BMC-main codebase into the portal. Adapted apiRequest to Supabase (writes to artifacts table). Added portal breadcrumb nav (← Dashboard / Business Model Canvas). Removed framework placeholder cards from Frameworks.tsx. Installed file-saver for Word document export. Tool is auth-gated via ProtectedRoute at /portal/tools/bmc.", "BMC tool accessible only to authenticated users at /portal/tools/bmc, saves to Supabase artifacts table, Word export works", TRUE , "BMCTool.tsx in portal, file-saver installed, Frameworks.tsx cleaned" , TRUE     , BMC tool fully integrated and pushed to main/staging/development - commit 2906e0d , Low
   4   , PHASE 4: TESTING                    , 4 - Testing      ,               ,         ,            , 11%       ,            , 2026-03-18, 2026-04-15, 28d            ,            ,                                                                                                                                                                                                      ,                                                                                , TRUE        ,                                                           , TRUE
   4.1 , Authentication Flow Testing         , 4 - Testing      , Security      , Critical, Complete   , 100%      , Keenan     , 2026-02-16, 2026-02-16, 1d             ,        3.2 , "Manual testing on staging (staging--edmecaacademy.netlify.app): (1) Email/password signup → confirmation email received from Info@edmeca.co.za via Resend, lands in inbox (not spam after DMARC record). (2) Email/password login → session active, redirects to /portal. (3) Google OAuth → consent screen opens, redirects to /portal on success. (4) Protected route — unauthenticated direct-access to /portal → redirects to /login. (5) Session persistence — page refresh maintains authenticated state. (6) Logout → session cleared, redirected to marketing pages. (7) Password reset email flow tested. (8) Production login button correctly disabled (renders as inert button, no navigation). All flows pass." , All authentication scenarios work correctly and securely                       , TRUE        , "Email/password flow, Google OAuth, protected route redirect, session persistence, logout, password reset" , TRUE     , All auth flows validated on staging — production login remains disabled pending full auth sign-off , Low
   4.2 , Component Unit Testing              , 4 - Testing      , Quality       , High    , Not Started, 0%        , Team       , 2026-03-18, 2026-03-25, 7d             ,        3.11, "Individual component testing using Jest/Vitest and React Testing Library: component rendering, user interactions, prop handling, and state management."                                             , All components function correctly in isolation                                 ,             , "Jest/Vitest tests, React Testing Library"                ,          , Comprehensive unit testing ensuring component reliability                    , Medium
   4.3 , Integration Testing                 , 4 - Testing      , Quality       , High    , Not Started, 0%        , Team       , 2026-03-20, 2026-03-28, 8d             ,        4.2 , "End-to-end functionality testing: API integration, user workflows, data flow, authentication integration, and feature interactions."                                                                , All integrated features work together seamlessly                               ,             , "API integration, user workflows, data flow"              ,          , Integration testing validating complete user journeys                        , High
   4.4 , Cross-Browser Compatibility         , 4 - Testing      , Compatibility , High    , Not Started, 0%        , Team       , 2026-03-25, 2026-04-01, 7d             ,        4.3 , "Browser compatibility validation: Chrome, Firefox, Safari, Edge testing across different versions and operating systems."                                                                           , Application works consistently across all major browsers                       ,             , "Chrome, Firefox, Safari, Edge testing"                   ,          , Cross-browser testing ensuring wide compatibility                            , Medium
   4.5 , Mobile Responsiveness Testing       , 4 - Testing      , Compatibility , High    , Not Started, 0%        , Team       , 2026-03-28, 2026-04-03, 6d             ,        4.4 , "Mobile device compatibility testing: iOS/Android devices, various screen sizes, touch interactions, and mobile-specific functionality."                                                             , Application provides optimal experience on all mobile devices                  ,             , "iOS/Android, screen sizes, touch interactions"           ,          , Mobile compatibility testing ensuring excellent mobile experience            , High
   4.6 , Performance Testing (Lighthouse)    , 4 - Testing      , Performance   , High    , Not Started, 0%        , Team       , 2026-04-01, 2026-04-05, 4d             ,        4.5 , "Performance benchmarking using Google Lighthouse: Core Web Vitals measurement, loading performance optimization, and performance score improvement."                                                , Application achieves excellent performance scores across all metrics           ,             , "Core Web Vitals, loading performance, optimization"      ,          , Performance optimization ensuring fast loading and smooth interactions       , Medium
   4.7 , Accessibility Testing (WCAG 2.1 AA) , 4 - Testing      , Accessibility , High    , Not Started, 0%        , Team       , 2026-04-03, 2026-04-08, 5d             ,        4.6 , "Accessibility compliance validation: screen reader compatibility, keyboard navigation, color contrast ratios, and WCAG 2.1 AA standards."                                                           , Application is fully accessible to users with disabilities                     ,             , "Screen readers, keyboard navigation, contrast ratios"    ,          , Accessibility testing ensuring inclusive user experience                     , Medium
   4.8 , Security Testing                    , 4 - Testing      , Security      , Critical, Not Started, 0%        , Team       , 2026-04-05, 2026-04-10, 5d             ,        4.7 , "Security vulnerability assessment: authentication security, data protection, XSS prevention, CSRF protection, and secure data transmission."                                                        , Application is secure against common vulnerabilities and attacks               ,             , "Authentication security, data protection, XSS prevention",          , Comprehensive security testing ensuring data protection                      , High
   4.9 , User Acceptance Testing             , 4 - Testing      , Quality       , High    , Not Started, 0%        , Team       , 2026-04-08, 2026-04-15, 7d             ,        4.8 , "Real user validation: beta testing with target users, usability testing, feedback collection, and user experience validation."                                                                      , Application meets user needs and provides excellent user experience            ,             , "Beta testing, user feedback, usability testing"          ,          , User validation ensuring application meets real-world needs                  , Medium
   5   , PHASE 5: DEPLOYMENT                 , 5 - Deployment   ,               ,         ,            , 43%       ,            , 2026-04-10, 2026-04-20, 10d            ,            ,                                                                                                                                                                                                      ,                                                                                , TRUE        ,                                                           , TRUE
   5.1 , Netlify Account & Configuration     , 5 - Deployment   , Infrastructure, High    , Complete   , 100%      , Keenan     , 2026-02-12, 2026-02-12, 1d             ,        3.1 , "Netlify site: edmecaacademy.netlify.app. Build command: node script/build.ts. Publish directory: dist. Auto-deploy on push to main branch. Netlify Forms enabled (hidden HTML form in client/index.html for contact form). Site linked to GitHub repo X4OConsulting/Edmeca-Academy-Website. Build hooks configured. Deploy notifications enabled." , Hosting platform ready for automated deployments                               , TRUE        , "Netlify site (edmecaacademy.netlify.app), build command, publish dir, Netlify Forms" , TRUE     , Site deployed and live — all pushes to main auto-deploy to production        , Low
   5.2 , Environment Variables Setup         , 5 - Deployment   , Security      , Critical, Complete   , 100%      , Keenan     , 2026-02-14, 2026-02-14, 1d             ,        5.1 , "Local secrets in .env.local (gitignored): VITE_SUPABASE_URL, VITE_SUPABASE_ANON_KEY, VITE_ENABLE_LOGIN=true, SESSION_SECRET, RESEND_API_KEY, SMARTSHEET_API_TOKEN, SMARTSHEET_SHEET_ID. netlify.toml branch contexts: [context.production] VITE_ENABLE_LOGIN=false; [context.staging] VITE_ENABLE_LOGIN=true; [context.development] VITE_ENABLE_LOGIN=true. Supabase keys and Resend keys also stored in Netlify dashboard environment variables. Google OAuth credentials stored only in .env.local and Supabase dashboard — never committed to version control." , All environment variables properly configured and secured                      , TRUE        , ".env.local (local), netlify.toml branch contexts, Netlify dashboard env vars" , TRUE     , Secrets follow gitignore + branch-context pattern — never committed to repo  , Low
   5.3 , CI/CD Pipeline Configuration        , 5 - Deployment   , DevOps        , High    , Complete   , 100%      , Keenan     , 2026-02-15, 2026-02-16, 1d             ,        5.2 , "GitHub Actions workflows (task 1.9): PR auto-review with TypeScript/build checks, auto-approval on success, auto-merge to staging branch, intelligent labelling, PR description generation, code quality analysis, security scanning. Netlify auto-deploys: push to main → production (edmeca.co.za), push to staging → staging--edmecaacademy.netlify.app, push to development → development preview. Git post-commit hook (.git/hooks/post-commit) fires on every commit: reads SMARTSHEET_API_TOKEN from .env.local, parses task ID from commit message (e.g. [3.9]), calls Smartsheet API to mark task Complete (feat:/fix:) or In Progress (other prefixes). smartsheet-cli.js available for manual overrides." , Code changes automatically trigger testing and deployment                      , TRUE        , "GitHub Actions workflows, Netlify auto-deploy (3 branches), git post-commit Smartsheet hook" , TRUE     , Full automation from commit → deploy → Smartsheet update without manual steps , Low
   5.4 , Staging Environment Setup           , 5 - Deployment   , Infrastructure, High    , Complete   , 100%      , Keenan     , 2026-02-18, 2026-02-18, 1d             ,        5.3 , "Staging environment fully configured: netlify.toml branch deploy contexts added for staging (VITE_ENABLE_LOGIN=true) and development. Netlify dashboard configured to deploy staging branch as branch deploy. Staging URL: staging--edmecaacademy.netlify.app verified live and accessible. All 3 branches (main/staging/development) synced and deploying correctly."                                , Staging environment mirrors production and deploys from staging branch         , TRUE        , "staging--edmecaacademy.netlify.app, branch deploy config", TRUE     , Completed ahead of schedule - staging live and verified Feb 18               , Low
   5.5 , Custom Domain Configuration         , 5 - Deployment   , Infrastructure, Medium  , Complete   , 100%      , Keenan     , 2026-02-16, 2026-02-17, 2d             ,        5.4 , "Production domain fully configured: edmeca.co.za (primary) and www.edmeca.co.za (redirect) mapped to Netlify. DNS at IT-Guru Online: A record 75.2.60.5, CNAME www to edmecaacademy.netlify.app. SSL Let's Encrypt provisioned after removing old Replit TXT verification records. CDN purge function deployed. All cross-browser tests passing (Chromium, Firefox, WebKit)."                   , "Production site accessible at edmeca.co.za with valid SSL"                   , TRUE        , "edmeca.co.za, SSL cert, DNS records, CDN purge function" , TRUE     , Completed ahead of schedule - SSL fixed by removing old Replit TXT records  , Low
   5.6 , Production Deployment               , 5 - Deployment   , Release       , Critical, Not Started, 0%        , Team       , 2026-04-15, 2026-04-20, 5d             ,        5.5 , "Live site deployment: production build deployment, monitoring setup, rollback plan preparation, and go-live execution."                                                                             , Application successfully deployed and accessible to users                      ,             , "Live site deployment, monitoring setup, rollback plan"   ,          , Production deployment with comprehensive monitoring and rollback capabilities, High
